# caB2B_Year_2_Edit

Schedule from MS Project, 2007-08-06 to 2011-12-27, A marks actual dates.
PSPL

## Calendars

- Standard: Mon-Fri 08:00-12:00, 13:00-17:00; Sat-Sun off. Exceptions (off unless hours are given): 2007-08-15, 2007-08-28, 2007-09-25, 2007-10-02.

## Resources

| Resource |
| --- |
| chetan_patil |
| Rahul Ner |
| chandrakant_talele |
| srinath_k |
| deepak_shingan |
| atul_jawale |
| hrishikesh_rajpathak |

## Schedule

| ID | WBS | Task | Duration | Start | Finish | Predecessors | Complete | Remaining | Baseline start | Baseline finish | Baseline duration | Total slack | Free slack | Constraint | Resources | Work | Actual work | Text1 |
| --- | --- | --- | --- | --- | --- | --- | --- | --- | --- | --- | --- | --- | --- | --- | --- | --- | --- | --- |
| 1 | 1 | **caB2B Year 2** | 1142.6d? | 2007-08-06 A | 2011-12-27 |  | 8% | 1055.09d? | 2007-08-06 | 2013-01-02 | 1411d? | 0d |  |  |  | 5122.4h | 1067.36h |  |
| 2 | 1.1 | **Mile Stone 1** | 56.67d | 2007-08-06 A | 2007-10-29 |  | 72% | 15.88d | 2007-08-06 | 2007-10-09 | 45d | 10.93d | 0d |  |  | 1338.4h | 1020.16h | Aug-Sept |
| 3 | 1.1.1 | **Saved Query** | 49.6d | 2007-08-06 A | 2007-10-18 |  | 74% | 12.95d | 2007-08-06 | 2007-10-03 | 41d | 13d | 7.07d |  |  | 424h | 320.4h |  |
| 4 | 1.1.1.1 | query model changes | 5d | 2007-08-06 A | 2007-08-10 A |  | 100% |  | 2007-08-06 | 2007-08-10 | 5d |  |  |  | chetan_patil | 40h | 40h |  |
| 5 | 1.1.1.2 | specifying hibernate mappings, schema generation | 10d | 2007-08-13 A | 2007-08-29 A | 4 | 100% |  | 2007-08-13 | 2007-08-27 | 9d |  |  |  | chetan_patil | 88h | 88h |  |
| 6 | 1.1.1.3 | UI changes to integrate and testing | 3d | 2007-08-28 A | 2007-08-31 A | 5 | 100% |  | 2007-08-28 | 2007-08-29 | 1d |  |  |  | chetan_patil | 32h | 32h |  |
| 7 | 1.1.1.4 | Regenrate UI (DAG etc) from saved query | 10d | 2007-10-04 | 2007-10-18 | 6, 14 |  |  | 2007-08-30 | 2007-09-12 | 10d | 13d |  |  | deepak_shingan | 80h |  |  |
| 8 | 1.1.1.5 | **Parametrized query** | 39.6d | 2007-08-06 A | 2007-10-04 |  | 86% | 5.41d | 2007-08-06 | 2007-10-03 | 41d | 0d |  |  |  | 184h | 160.4h |  |
| 9 | 1.1.1.5.1 | develop wireframes | 2d | 2007-08-06 A | 2007-08-07 A |  | 100% |  | 2007-08-06 | 2007-08-07 | 2d |  |  |  | Rahul Ner | 16h | 16h |  |
| 10 | 1.1.1.5.2 | query model changes | 5d | 2007-08-30 A | 2007-09-05 A | 9 | 100% |  | 2007-08-30 | 2007-09-05 | 5d |  |  |  | chetan_patil | 40h | 40h |  |
| 11 | 1.1.1.5.3 | specifying hibernate mappings, schema generation | 3d | 2007-09-06 A | 2007-09-10 A | 10 | 100% |  | 2007-09-06 | 2007-09-10 | 3d |  |  |  | chetan_patil | 24h | 24h |  |
| 12 | 1.1.1.5.4 | develop screen to define parameterized query | 6d | 2007-09-17 A | 2007-09-24 | 11 | 85% | 0.9d | 2007-09-17 | 2007-09-24 | 6d | 3.55d | 0d |  | deepak_shingan | 48h | 40.8h |  |
| 13 | 1.1.1.5.5 | develop screen to execute parameterized query | 2d | 2007-09-25 A | 2007-09-27 | 12 | 78% | 0.45d | 2007-09-25 | 2007-09-27 | 3d | 2d | 0d |  | deepak_shingan [164.5%] | 24h | 20.4h |  |
| 14 | 1.1.1.5.6 | UI changes to integrate and testing | 3.6d | 2007-09-28 A | 2007-10-04 | 13 | 56% | 1.6d | 2007-09-28 | 2007-10-03 | 4d | 0d |  |  | deepak_shingan [120%] | 32h | 19.2h |  |
| 15 | 1.1.2 | **Create custom data categories** | 51.67d | 2007-08-06 A | 2007-10-22 |  | 73% | 13.71d | 2007-08-06 | 2007-10-08 | 43.4d | 10.93d | 0d |  |  | 400h | 276.08h |  |
| 16 | 1.1.2.1 | **In experiment context** | 28d | 2007-08-06 A | 2007-09-14 A |  | 100% |  | 2007-08-06 | 2007-09-14 | 28d |  |  |  |  | 232h | 232h |  |
| 17 | 1.1.2.1.1 | develop wireframes | 1d | 2007-08-06 A | 2007-08-06 A |  | 100% |  | 2007-08-06 | 2007-08-06 | 1d |  |  |  | hrishikesh_rajpathak | 8h | 8h |  |
| 18 | 1.1.2.1.2 | deveople screen to create CDC | 7d | 2007-08-07 A | 2007-08-16 A | 17 | 100% |  | 2007-08-07 | 2007-08-16 | 7d |  |  |  | hrishikesh_rajpathak | 56h | 56h |  |
| 19 | 1.1.2.1.3 | design CDC backend | 7d | 2007-08-17 A | 2007-08-27 A | 18 | 100% |  | 2007-08-17 | 2007-08-27 | 7d |  |  |  | hrishikesh_rajpathak | 56h | 56h |  |
| 20 | 1.1.2.1.4 | saving CDC | 4d | 2007-08-28 A | 2007-09-03 A | 19 | 100% |  | 2007-08-28 | 2007-09-03 | 4d |  |  |  | hrishikesh_rajpathak [125%] | 40h | 40h |  |
| 21 | 1.1.2.1.5 | populating and fetching data for CDC | 8d | 2007-09-04 A | 2007-09-14 A | 20 | 100% |  | 2007-09-04 | 2007-09-14 | 8d |  |  |  | hrishikesh_rajpathak [112.5%] | 72h | 72h |  |
| 22 | 1.1.2.2 | **By Admin** | 23.67d | 2007-09-17 A | 2007-10-22 | 16 | 35% | 15.32d | 2007-09-17 | 2007-10-08 | 15.4d | 10.93d |  |  |  | 168h | 44.08h |  |
| 23 | 1.1.2.2.1 | develop wireframes | 1.5d | 2007-09-17 A | 2007-09-18 A |  | 100% |  | 2007-09-17 | 2007-09-17 | 1d |  |  |  | Rahul Ner | 8h | 8h |  |
| 24 | 1.1.2.2.2 | deveople screen to create CDC | 5d | 2007-09-17 A | 2007-09-21 |  | 70% | 1.5d | 2007-09-17 | 2007-09-21 | 5d | 29.6d | 0d |  | hrishikesh_rajpathak | 40h | 28h |  |
| 25 | 1.1.2.2.3 | design backend | 3.6d | 2007-09-17 A | 2007-09-20 |  | 45% | 1.98d | 2007-09-17 | 2007-09-19 | 2d | 10.93d | 0d |  | srinath_k | 16h | 8.08h |  |
| 26 | 1.1.2.2.4 | coding for backend | 4d | 2007-09-21 | 2007-10-15 | 25 |  |  | 2007-09-19 | 2007-09-27 | 6d | 10.93d | 0d | start no earlier than 2007-09-21 | srinath_k [50%]; atul_jawale | 48h |  |  |
| 27 | 1.1.2.2.5 | finding matching CDC while opeing experiment | 4.67d | 2007-10-16 | 2007-10-22 | 26 |  |  | 2007-09-27 | 2007-10-08 | 7d | 10.93d |  |  | atul_jawale; srinath_k [50%] | 56h |  |  |

Notes:
- 8: This is User friendly Search for experiment data / Define category along with result view. Using this, user should be able to just define limit and get results. No need to worry about DAG, paths and no need to select the result view. / Refer to caTissue for requirments and screens. / Special Case : Category Query for a one-many attribute / (Queries like Participant with PMI = 1 and 2)
- 15: Show datalist, select subtree from data list as spreadsheet

| ID | WBS | Task | Duration | Start | Finish | Predecessors | Complete | Remaining | Baseline start | Baseline finish | Baseline duration | Total slack | Free slack | Constraint | Resources | Work | Actual work |
| --- | --- | --- | --- | --- | --- | --- | --- | --- | --- | --- | --- | --- | --- | --- | --- | --- | --- |
| 28 | 1.1.3 | **New viewers (metadata based)** | 43d | 2007-08-06 A | 2007-10-09 |  | 72% | 12.15d | 2007-08-06 | 2007-09-17 | 29d | 19.6d | 8.67d |  |  | 256h | 203.68h |
| 29 | 1.1.3.1 | design for generic viewer | 13.3d | 2007-08-06 A | 2007-09-05 |  | 40% | 7.98d | 2007-08-06 | 2007-08-14 | 7d | 33.46d | 0d |  | chandrakant_talele | 56h | 24.08h |
| 30 | 1.1.3.2 | **Heat Map viewer** | 36d | 2007-08-16 A | 2007-10-09 | 29 | 85% | 5.56d | 2007-08-16 | 2007-09-17 | 22d | 19.6d |  |  |  | 200h | 179.6h |
| 31 | 1.1.3.2.1 | find appropriate 3rd party library | 13d | 2007-08-16 A | 2007-09-05 A |  | 100% |  | 2007-08-16 | 2007-08-30 | 9d |  |  |  | deepak_shingan | 104h | 104h |
| 32 | 1.1.3.2.2 | finalize operation to be done on heat map | 3d | 2007-09-06 A | 2007-09-10 A | 31 | 100% |  | 2007-08-31 | 2007-09-04 | 3d |  |  |  | deepak_shingan | 24h | 24h |
| 33 | 1.1.3.2.3 | implement heat map viewer | 17d | 2007-09-11 A | 2007-10-09 | 32 | 70% | 5.1d | 2007-09-05 | 2007-09-17 | 9d | 19.6d |  |  | chandrakant_talele [50%] | 72h | 51.6h |
| 34 | 1.1.4 | **Spreadsheet Component** | 41.2d | 2007-08-06 A | 2007-10-08 |  | 76% | 9.99d | 2007-08-06 | 2007-09-10 | 24d | 16.04d | 0d |  |  | 208h | 179.2h |
| 35 | 1.1.4.1 | Export | 2d | 2007-08-06 A | 2007-08-07 A |  | 100% |  | 2007-08-06 | 2007-08-07 | 2d |  |  |  | atul_jawale | 16h | 16h |
| 36 | 1.1.4.2 | Specify view for Custom data category | 3d | 2007-08-08 A | 2007-08-10 A | 35 | 100% |  | 2007-08-08 | 2007-08-10 | 3d |  |  |  | atul_jawale | 24h | 24h |
| 37 | 1.1.4.3 | Filters like spot fire | 10d | 2007-08-13 A | 2007-08-27 A | 36 | 100% |  | 2007-08-13 | 2007-08-27 | 10d |  |  |  | atul_jawale | 80h | 80h |
| 38 | 1.1.4.4 | Add New ,copy ,paste | 3d | 2007-08-28 A | 2007-09-03 A | 37 | 100% |  | 2007-08-28 | 2007-09-03 | 3d |  |  |  | atul_jawale [166.7%] | 40h | 40h |
| 39 | 1.1.4.5 | Integrating in cab2b | 11.7d | 2007-09-18 A | 2007-10-08 | 38, 23 | 38% | 7.2d | 2007-09-04 | 2007-09-10 | 5d | 16.04d |  | start no earlier than 2007-09-17 | Rahul Ner [53.3%] | 48h | 19.2h |
| 40 | 1.1.5 | **Bug fixes** | 26.8d | 2007-09-03 A | 2007-10-11 | 34 | 80% | 5.36d |  |  |  | 17.8d |  |  |  | 50.4h | 40.8h |
| 41 | 1.1.5.1 | Partial relavance based search | 6d | 2007-09-03 A | 2007-09-10 A |  | 100% |  |  |  |  |  |  | start no earlier than 2007-09-03 | Rahul Ner [50%] | 24h | 24h |
| 42 | 1.1.5.2 | Path replication bug | 6d | 2007-09-28 A | 2007-10-11 |  | 60% | 2.4d |  |  |  | 17.8d | 11.87d | start no earlier than 2007-09-28 | srinath_k [50%] | 26.4h | 16.8h |
| 43 | 1.1.6 | QA cycle | 5d | 2007-10-22 | 2007-10-29 | 3, 15, 28, 42 |  |  |  |  |  | 10.93d |  |  |  |  |  |
| 44 | 1.2 | **Ongoing Features** | 52.6d | 2007-09-24 A | 2007-12-07 |  | 7% | 48.86d |  |  |  | 1057d |  |  |  | 560h | 47.2h |
| 45 | 1.2.1 | **Providing security credentials for the data services** | 24d | 2007-09-24 A | 2007-10-29 |  | 21% | 18.89d | 2007-08-06 | 2007-09-11 | 25d | 1085.6d |  |  |  | 192h | 47.2h |
| 46 | 1.2.1.1 | investigate grid security features | 14d | 2007-09-24 A | 2007-10-16 | 24 | 35% | 9.1d | 2007-08-06 | 2007-08-29 | 15d | 1085.6d | 0d | start no earlier than 2007-09-18 | hrishikesh_rajpathak | 120h | 47.2h |
| 47 | 1.2.1.2 | test with catissue | 9d | 2007-10-17 | 2007-10-29 | 46 |  |  | 2007-08-30 | 2007-09-11 | 9d | 1085.6d |  |  | hrishikesh_rajpathak | 72h |  |
| 48 | 1.2.2 | **ICR** | 46d | 2007-10-04 | 2007-12-07 | 14 |  |  | 2007-09-12 | 2007-10-09 | 20d | 0d |  |  |  | 368h |  |
| 49 | 1.2.2.1 | **CNAT Analytical service** | 46d | 2007-10-04 | 2007-12-07 |  |  |  |  |  |  | 0d |  |  |  | 368h |  |
| 50 | 1.2.2.1.1 | understand input and output of the tool | 4d | 2007-10-04 | 2007-10-10 |  |  |  |  |  |  | 0d |  |  | chetan_patil | 32h |  |
| 51 | 1.2.2.1.2 | finalize input / output model | 8d | 2007-10-10 | 2007-10-22 | 50 |  |  |  |  |  | 0d |  |  | chetan_patil | 64h |  |
| 52 | 1.2.2.1.3 | deploy the service | 5d | 2007-10-22 | 2007-10-29 | 51 |  |  |  |  |  | 0d |  |  | chetan_patil | 40h |  |

Notes:
- 28: Annotation viewer (gene Inspector) embedded webpage - browser window (refer to FE) / Pathway browser / Literature network / heat map
- 34: Edit button (slide no 46) / copy (use clipboard) / paste (To newly added columns) / Add Column / Delete Column (Newly added columns only P2) / Always show Export/Filter options + formulas (P3) / count of distinct values
- 36: (Just a spreadsheet operations) + show all column , select the required columns
- 37: Filter on BioDataCube / count of distinct values

| ID | WBS | Task | Duration | Start | Finish | Predecessors | Baseline start | Baseline finish | Baseline duration | Total slack | Free slack | Resources | Work | Text1 |
| --- | --- | --- | --- | --- | --- | --- | --- | --- | --- | --- | --- | --- | --- | --- |
| 53 | 1.2.2.1.4 | **Visualizer** | 29d | 2007-10-29 | 2007-12-07 | 52 |  |  |  | 0d |  |  | 232h |  |
| 54 | 1.2.2.1.4.1 | define input model of the visualizer | 4d | 2007-10-29 | 2007-11-02 |  |  |  |  | 0d |  | chetan_patil | 32h |  |
| 55 | 1.2.2.1.4.2 | implementation | 25d | 2007-11-02 | 2007-12-07 | 54 |  |  |  | 0d |  | chetan_patil | 200h |  |
| 56 | 1.3 | **Mile Stone 2** | 54.93d | 2007-10-29 | 2008-01-14 | 2 | 2007-10-10 | 2008-08-05 | 215d | 0d |  |  | 1720h | Oct-Nov |
| 57 | 1.3.1 | **Analytical services for micro array data** | 21d | 2007-10-29 | 2007-11-27 |  | 2007-10-10 | 2007-11-07 | 21d | 33.93d |  |  | 168h |  |
| 58 | 1.3.1.1 | Investigate on AS metadata | 9d | 2007-10-29 | 2007-11-09 |  | 2007-10-10 | 2007-10-22 | 9d | 33.93d | 0d | hrishikesh_rajpathak | 72h |  |
| 59 | 1.3.1.2 | load input output model for service | 5d | 2007-11-09 | 2007-11-16 | 58 | 2007-10-23 | 2007-10-29 | 5d | 33.93d | 0d | hrishikesh_rajpathak | 40h |  |
| 60 | 1.3.1.3 | test the service | 7d | 2007-11-16 | 2007-11-27 | 59 | 2007-10-30 | 2007-11-07 | 7d | 33.93d |  | hrishikesh_rajpathak | 56h |  |
| 61 | 1.3.2 | **Define output view (3rd screen)** | 26d | 2007-12-07 | 2008-01-14 |  | 2007-11-08 | 2007-12-13 | 26d | 0d |  |  | 208h |  |
| 62 | 1.3.2.1 | develop wireframes | 1d | 2007-12-07 | 2007-12-10 | 48 | 2007-11-08 | 2007-11-08 | 1d | 0d |  | chetan_patil | 8h |  |
| 63 | 1.3.2.2 | develop screen | 10d | 2007-12-10 | 2007-12-24 | 62 | 2007-11-09 | 2007-11-22 | 10d | 0d |  | chetan_patil | 80h |  |
| 64 | 1.3.2.3 | chages in query generation | 15d | 2007-12-24 | 2008-01-14 | 63 | 2007-11-23 | 2007-12-13 | 15d | 0d |  | chetan_patil | 120h |  |
| 65 | 1.3.3 | Convert 3D to 2D data | 44d | 2007-10-29 | 2007-12-28 |  | 2007-12-14 | 2008-01-14 | 22d | 10.93d |  | srinath_k [50%] | 176h |  |
| 66 | 1.3.4 | Creating and save categories | 30d | 2007-10-29 | 2007-12-10 |  | 2008-01-15 | 2008-02-04 | 15d | 24.93d |  | Rahul Ner [50%] | 120h |  |
| 67 | 1.3.5 | Automated down load of caDSR models | 44d | 2007-10-29 | 2007-12-28 |  | 2008-02-05 | 2008-03-05 | 22d | 10.93d |  | chandrakant_talele [50%] | 176h |  |
| 68 | 1.3.6 | Connecting two categories | 7d | 2007-10-29 | 2007-11-07 |  | 2008-03-06 | 2008-03-14 | 7d | 25.93d | 0d | deepak_shingan | 56h |  |
| 69 | 1.3.7 | New viewers (metadata based) | 22d | 2007-11-07 | 2007-12-07 | 68 | 2008-03-17 | 2008-04-15 | 22d | 25.93d |  | deepak_shingan | 176h |  |
| 70 | 1.3.8 | ICR | 40d | 2007-10-29 | 2007-12-24 |  | 2008-04-16 | 2008-08-05 | 80d | 14.93d |  | atul_jawale; hrishikesh_rajpathak | 640h |  |
| 71 | 1.4 | **Mile Stone 3** | 62d | 2008-01-14 | 2008-04-09 | 56 | 2008-08-06 | 2009-05-28 | 212d | 0d |  |  | 1504h | Dec-Jan |
| 72 | 1.4.1 | configuration of service/instance to query | 44d | 2008-01-14 | 2008-03-14 |  | 2008-08-06 | 2008-09-04 | 22d | 18d |  | chandrakant_talele [50%] | 176h |  |
| 73 | 1.4.2 | caArray category | 45d | 2008-01-14 | 2008-03-17 |  | 2008-09-05 | 2008-11-06 | 45d | 17d |  | deepak_shingan | 360h |  |
| 74 | 1.4.3 | Remove client jar dependency for Analytical services (AS) | 35d | 2008-01-14 | 2008-03-03 |  | 2008-11-07 | 2008-12-25 | 35d | 27d |  | chetan_patil | 280h |  |
| 75 | 1.4.4 | Ability to configure the applications used for metadata serach | 18d | 2008-01-14 | 2008-02-07 |  | 2008-12-26 | 2009-01-20 | 18d | 0d |  | Rahul Ner [50%] | 72h |  |
| 76 | 1.4.5 | Join data list (data category) | 30d | 2008-01-14 | 2008-02-25 |  | 2009-02-11 | 2009-03-03 | 15d | 32d |  | srinath_k [50%] | 120h |  |
| 77 | 1.4.6 | New viewers (metadata based) | 44d | 2008-02-07 | 2008-04-09 | 75 | 2009-03-04 | 2009-04-02 | 22d | 0d |  | Rahul Ner [50%] | 176h |  |
| 78 | 1.4.7 | ICR | 20d | 2008-01-14 | 2008-02-11 |  | 2009-04-03 | 2009-05-28 | 40d | 42d |  | hrishikesh_rajpathak; atul_jawale | 320h |  |

Notes:
- 61: It copies the original DAG build using conditions and allows user to specify more classes needed as output. It is similar to tissue core. Admin won't define view for each category. It will be smartly determined by the application. User can mark a node as "Present in view" Or "Not present in view". We need to decide should user be able to delete his limits (nodes) while defining view
- 65: S-> molecular Event1 and 2 show then as spreadsheet with row as specimen1,2,3 and columns as ME1 col1, ME1 col2,ME2 col1, ME2 col2, This is only for one level in tree (association)
- 66: It it similar to parameterixed query, screen will be similar to add limit page / UE to change slide 72, it should be similar to parametrized query
- 67: Admin will be shown all avalible models using discovery. Then selected models will be loaded
- 68: DAG like view where two graphs are shown in DAG and they will be connected by pairing classes from one category to eac class in other category
- 72: With setting for: Admin, User, Query / Configurin service URL, caB2B clinet URL etc.Ability to configure the applications used for metadata serach
- 74: Get a generic way to invoke AS similar to data services
- 75: Limited by only available services. Also is no instance is configured by admin and user then model for that instance won't searched in metadata. Even though metadata serach is performed on some specific models, user can also view experiments which has data from some other models
- 76: Connecting two datalist based on CDE match, put 2 dropdowns on slide 6 for showing classes OR put attributes + class. / This should be important in joining custom data category. Put a dropdown for Equals and not equals

| ID | WBS | Task | Duration | Start | Finish | Predecessors | Baseline start | Baseline finish | Baseline duration | Total slack | Text1 |
| --- | --- | --- | --- | --- | --- | --- | --- | --- | --- | --- | --- |
| 79 | 1.5 | **Mile Stone 4** | 252d | 2008-04-09 | 2009-03-27 | 71 | 2009-05-29 | 2010-04-05 | 222d | 0d | Feb-Mar |
| 80 | 1.5.1 | Relevance based searched | 35d | 2008-04-09 | 2008-05-28 |  | 2009-05-29 | 2009-07-16 | 35d | 0d |  |
| 81 | 1.5.2 | pre-defined filters on attributes | 30d | 2008-05-28 | 2008-07-09 | 80 | 2009-01-21 | 2009-02-10 | 15d | 0d |  |
| 82 | 1.5.3 | Return derived classes when searched for base class | 30d | 2008-07-09 | 2008-08-20 | 81 | 2009-07-17 | 2009-08-27 | 30d | 0d |  |
| 83 | 1.5.4 | Asynchronous execution of query | 45d | 2008-08-20 | 2008-10-22 | 82 | 2009-08-28 | 2009-10-29 | 45d | 0d |  |
| 84 | 1.5.5 | Authentication with our own IDP | 30d | 2008-10-22 | 2008-12-03 | 83 | 2009-10-30 | 2009-12-10 | 30d | 0d |  |
| 85 | 1.5.6 | Curating path | 30d | 2008-12-03 | 2009-01-14 | 84 | 2009-12-11 | 2010-01-21 | 30d | 0d |  |
| 86 | 1.5.7 | New viewers (metadata based) | 22d | 2009-01-14 | 2009-02-13 | 85 | 2010-01-22 | 2010-02-22 | 22d | 0d |  |
| 87 | 1.5.8 | Incorporate UE Review comments till date Part 1 | 20d | 2009-02-13 | 2009-03-13 | 86 | 2010-02-23 | 2010-03-22 | 20d | 0d |  |
| 88 | 1.5.9 | Define URLs for selected data for browser window viewer | 10d | 2009-03-13 | 2009-03-27 | 87 | 2010-03-23 | 2010-04-05 | 10d | 0d |  |
| 89 | 1.6 | **Mile Stone 5** | 365d | 2009-03-27 | 2010-08-20 | 79 | 2010-04-06 | 2011-08-29 | 365d | 0d | NA |
| 90 | 1.6.1 | View the existing data list | 22d | 2009-03-27 | 2009-04-28 |  | 2010-04-06 | 2010-05-05 | 22d | 0d |  |
| 91 | 1.6.2 | Paths between categories and class | 35d | 2009-04-28 | 2009-06-16 | 90 | 2010-05-06 | 2010-06-23 | 35d | 0d |  |
| 92 | 1.6.3 | Create Experiments from the multiple existing data list. | 10d | 2009-06-16 | 2009-06-30 | 91 | 2010-06-24 | 2010-07-07 | 10d | 0d |  |
| 93 | 1.6.4 | User friendly names for records | 15d | 2009-06-30 | 2009-07-21 | 92 | 2010-07-08 | 2010-07-28 | 15d | 0d |  |
| 94 | 1.6.5 | parenthesis in DAG | 35d | 2009-07-21 | 2009-09-08 | 93 | 2010-07-29 | 2010-09-15 | 35d | 0d |  |
| 95 | 1.6.6 | Popularity Paths, categories | 18d | 2009-09-08 | 2009-10-02 | 94 | 2010-09-16 | 2010-10-11 | 18d | 0d |  |
| 96 | 1.6.7 | Edit used path (overriding curated/selected paths) | 10d | 2009-10-02 | 2009-10-16 | 95 | 2010-10-12 | 2010-10-25 | 10d | 0d |  |
| 97 | 1.6.8 | Define Attribute view | 10d | 2009-10-16 | 2009-10-30 | 96 | 2010-10-26 | 2010-11-08 | 10d | 0d |  |
| 98 | 1.6.9 | Highlight matched words in search results | 10d | 2009-10-30 | 2009-11-13 | 97 | 2010-11-09 | 2010-11-22 | 10d | 0d |  |
| 99 | 1.6.10 | Incorporate UE Review comments till date Part 2 | 30d | 2009-11-13 | 2009-12-25 | 98 | 2010-11-23 | 2011-01-03 | 30d | 0d |  |
| 100 | 1.6.11 | Partial auto connect | 45d | 2009-12-25 | 2010-02-26 | 99 | 2011-01-04 | 2011-03-07 | 45d | 0d |  |
| 101 | 1.6.12 | Authentication with other IDP | 15d | 2010-02-26 | 2010-03-19 | 100 | 2011-03-08 | 2011-03-28 | 15d | 0d |  |
| 102 | 1.6.13 | Smart metadata search (Merge CDEs across versions of same application) | 45d | 2010-03-19 | 2010-05-21 | 101 | 2011-03-29 | 2011-05-30 | 45d | 0d |  |
| 103 | 1.6.14 | Delete data to existing experiment | 15d | 2010-05-21 | 2010-06-11 | 102 | 2011-05-31 | 2011-06-20 | 15d | 0d |  |
| 104 | 1.6.15 | Add data to existing experiment | 15d | 2010-06-11 | 2010-07-02 | 103 | 2011-06-21 | 2011-07-11 | 15d | 0d |  |
| 105 | 1.6.16 | While creating data list, ability to add only selected attributes of records | 35d | 2010-07-02 | 2010-08-20 | 104 | 2011-07-12 | 2011-08-29 | 35d | 0d |  |

Notes:
- 80: Explorer and use Lucene / For entered search string, get synonyms and search for those also. Get synonyms from grid (EVS)
- 81: UE edit slide 78 , refer to caTissue for details
- 83: Asynchronous queres and their results are always saved (System-saved) Later on user can save them expliciltly or can delete it.
- 85: Along with curating, copy curated paths across different application versions
- 92: Slide 61-65
- 93: Instead of participant_1 show Smith Merry
- 97: Ability to define order in which attributes will be displayed in Add limit and result detailed page
- 98: Highlight matched words from description/name, / Highlight matched attributes in add limit page / Select matched Permissible values, / Select matched concept codes / For public id and Cocnept code show Hyper link to caDSR
- 102: Three versions of caTissue should not lead to metadata search showing 3 participant if its CDE is same in each instance, And if shown once query all three instances
- 105: what about the service that expect data fully populated ?

| ID | WBS | Task | Type | Duration | Start | Finish | Predecessors | Baseline start | Baseline finish | Baseline duration | Total slack | Free slack | Text1 |
| --- | --- | --- | --- | --- | --- | --- | --- | --- | --- | --- | --- | --- | --- |
| 106 | 1.7 | **Mile Stone 6** |  | 252d | 2010-08-20 | 2011-08-09 | 89 | 2011-08-30 | 2012-08-15 | 252d | 0d |  | NA |
| 107 | 1.7.1 | Copy/Move experiment |  | 15d | 2010-08-20 | 2010-09-10 |  | 2011-08-30 | 2011-09-19 | 15d | 0d |  |  |
| 108 | 1.7.2 | Upgrade technology stack as per caBIG |  | 45d | 2010-09-10 | 2010-11-12 | 107 | 2011-09-20 | 2011-11-21 | 45d | 0d |  |  |
| 109 | 1.7.3 | Keyboard support for application |  | 45d | 2010-11-12 | 2011-01-14 | 108 | 2011-11-22 | 2012-01-23 | 45d | 0d |  |  |
| 110 | 1.7.4 | Automatic resize of application UI for all resolution |  | 30d | 2011-01-14 | 2011-02-25 | 109 | 2012-01-24 | 2012-03-05 | 30d | 0d |  |  |
| 111 | 1.7.5 | Defining category group |  | 22d | 2011-02-25 | 2011-03-29 | 110 | 2012-03-06 | 2012-04-04 | 22d | 0d |  |  |
| 112 | 1.7.6 | Advance view |  | 35d | 2011-03-29 | 2011-05-17 | 111 | 2012-04-05 | 2012-05-23 | 35d | 0d |  |  |
| 113 | 1.7.7 | Incorporate pending UE comments |  | 60d | 2011-05-17 | 2011-08-09 | 112 | 2012-05-24 | 2012-08-15 | 60d | 0d |  |  |
| 114 | 1.8 | **Documentaion** |  | 100d | 2011-08-09 | 2011-12-27 | 113 | 2012-08-16 | 2013-01-02 | 100d | 0d |  | Apr W1 W2 W3 |
| 115 | 1.8.1 | User manual |  | 35d | 2011-08-09 | 2011-09-27 |  | 2012-08-16 | 2012-10-03 | 35d | 0d |  |  |
| 116 | 1.8.2 | Design document |  | 35d | 2011-09-27 | 2011-11-15 | 115 | 2012-10-04 | 2012-11-21 | 35d | 0d |  |  |
| 117 | 1.8.3 | Lesson learned document |  | 15d | 2011-11-15 | 2011-12-06 | 116 | 2012-11-22 | 2012-12-12 | 15d | 0d |  |  |
| 118 | 1.8.4 | Web site update |  | 15d | 2011-12-06 | 2011-12-27 | 117 | 2012-12-13 | 2013-01-02 | 15d | 0d |  |  |
| 119 | 1.9 | **Release activities** |  | 134d | 2007-08-06 | 2008-02-13 |  | 2007-08-06 | 2008-02-11 | 134d | 1008.6d |  | Apr W4-May |
| 120 | 1.9.1 | internal QA cycle |  | 30d | 2007-08-06 | 2007-09-18 |  | 2007-08-06 | 2007-09-18 | 30d | 1010d | 0d |  |
| 121 | 1.9.2 | bug fixing |  | 45d | 2007-09-19 | 2007-11-22 | 120 | 2007-09-19 | 2007-11-20 | 45d | 1008.6d | 0d |  |
| 122 | 1.9.3 | beta release |  | 7d | 2007-11-23 | 2007-12-03 | 121 | 2007-11-21 | 2007-11-29 | 7d | 1008.6d | 0d |  |
| 123 | 1.9.4 | Testing by end users | milestone | 0d | 2007-12-03 | 2007-12-03 | 122 | 2007-11-29 | 2007-11-29 | 0d | 1008.6d | 0d |  |
| 124 | 1.9.5 | bug fixing (beta and end user bugs) |  | 45d | 2007-12-04 | 2008-02-04 | 123 | 2007-11-30 | 2008-01-31 | 45d | 1008.6d | 0d |  |
| 125 | 1.9.6 | final release |  | 7d | 2008-02-05 | 2008-02-13 | 124 | 2008-02-01 | 2008-02-11 | 7d | 1008.6d |  |  |
| 126 | 1.10 | **Performance** |  | 1d? | 2007-08-06 | 2007-08-06 |  | 2007-08-06 | 2007-08-06 | 1d? | 1141.6d |  | Unable to estimate |
| 127 | 1.10.1 | WS enumeration |  | 1d? | 2007-08-06 | 2007-08-06 |  | 2007-08-06 | 2007-08-06 | 1d? | 1143d |  |  |
| 128 | 1.10.2 | High throughput workgroup |  | 1d? | 2007-08-06 | 2007-08-06 |  | 2007-08-06 | 2007-08-06 | 1d? | 1143d |  |  |
| 129 | 1.10.3 | Explore caGrid FTP |  | 1d? | 2007-08-06 | 2007-08-06 |  | 2007-08-06 | 2007-08-06 | 1d? | 1143d |  |  |
| 130 | 1.10.4 | Develop prototype for compomnets for performance issues |  | 1d? | 2007-08-06 | 2007-08-06 |  | 2007-08-06 | 2007-08-06 | 1d? | 1143d |  |  |

Notes:
- 109: For entire application whereever possible like buttons,tab-ed navigation through search results
- 110: Current implementation is for target resolution 1024x768. If application is used on higher resolutions, component size does not get adjusted automatically. i.e box of size 200 pixel on 1024x768 takes 200 pixels on 1280x960
- 112: advance tab on result screen(4) / Not important as per discussion with Srikanth, Rakesh
